# Cluster 8 Punch List

Schedule from Primavera P6, 2019-03-11 to 2019-08-29, data date 2019-06-05, A marks actual dates.

## Calendars

- 5 days 9-2pm: Mon-Fri 09:30-14:30; Sat-Sun off. Exceptions (off unless hours are given): 2019-04-04 to 2019-04-05, 2019-05-27, 2019-07-04, 2019-07-25.

## Schedule

| ID | WBS | Activity | Type | Duration | Start | Finish | Predecessors | Complete | Remaining | Planned start | Planned finish | Total float | Free float |
| --- | --- | --- | --- | --- | --- | --- | --- | --- | --- | --- | --- | --- | --- |
|  | 1 | **PROJECT START** |  |  | 2019-04-22 | 2019-04-22 |  |  |  |  |  |  |  |
| CIC-1270 |  | Project Start | milestone | 0d | 2019-04-22 A | 2019-04-22 A | CIC-1530 | 100% |  |  |  |  |  |
| CIC-1530 |  | Proposal Approval | milestone | 0d | 2019-04-22 A | 2019-04-22 A |  | 100% |  |  |  |  |  |
|  | 2 | **PROCUREMENT** |  |  | 2019-03-11 | 2019-08-15 |  |  |  |  |  |  |  |
|  | 10 | **Terrazzo** |  |  | 2019-04-11 | 2019-06-26 |  |  |  |  |  |  |  |
| CIC-1555 |  | Mock Up Sample Prep |  | 5d | 2019-04-11 A | 2019-04-17 A | CIC-1530 | 100% |  | 2019-05-13 | 2019-05-17 |  |  |
| CIC-1550 |  | Mock Up Sample Approval |  | 2d | 2019-05-07 A | 2019-06-05 | CIC-1555 | 50% | 1d | 2019-05-20 | 2019-05-21 | 5d | 0d |
| CIC-1535 |  | Submittal For Record |  | 5d | 2019-06-06 | 2019-06-12 | CIC-1550 |  |  |  |  | 44d | 0d |
| CIC-1540 |  | Submittal Approval |  | 5d | 2019-06-13 | 2019-06-19 | CIC-1535 |  |  |  |  | 44d | 0d |
| CIC-1545 |  | Fabrication & Delivery |  | 5d | 2019-06-20 | 2019-06-26 | CIC-1540 |  |  |  |  | 44d |  |
|  | 8 | **Shower Doors** |  |  | 2019-04-15 | 2019-06-10 |  |  |  |  |  |  |  |
| CIC-1020 |  | Fabrication & Delivery |  | 40d | 2019-04-15 A | 2019-06-10 | CIC-1270, CIC-1530 | 90% | 4d | 2019-04-22 | 2019-06-17 | 31d | 0d |
|  | 9 | **Pool Finishes** |  |  | 2019-05-29 | 2019-08-15 |  |  |  |  |  |  |  |
| CIC-1030 |  | Submittal Prep |  | 5d | 2019-05-29 | 2019-06-05 A | CIC-1270, CIC-1530 | 100% |  | 2019-05-29 | 2019-06-04 |  |  |
| CIC-1040 |  | Submittal Approval |  | 10d | 2019-06-05 | 2019-06-18 | CIC-1030 |  |  |  |  | 0d |  |
| CIC-1050 |  | Fabrication & Delivery |  | 40d | 2019-06-19 | 2019-08-15 | CIC-1040 |  |  |  |  | 0d |  |
|  | 1 | **Millwork** |  |  | 2019-04-24 | 2019-07-10 |  |  |  |  |  |  |  |
| CIC-1060 |  | Submittal Prep |  | 10d | 2019-04-24 A | 2019-05-07 A | CIC-1270, CIC-1530, CIC-1530 FF | 100% |  | 2019-05-08 | 2019-05-21 |  |  |
| CIC-1070 |  | Submittal Approval |  | 10d | 2019-05-08 A | 2019-06-11 | CIC-1060 | 50% | 5d | 2019-05-08 | 2019-05-21 | 20d | 0d |
| CIC-1080 |  | Fabrication & Delivery |  | 20d | 2019-06-12 | 2019-07-10 | CIC-1070 |  |  |  |  | 20d | 15d |
|  | 2 | **Green Plaster** |  |  | 2019-05-03 | 2019-06-19 |  |  |  |  |  |  |  |
| CIC-1090 |  | Submittal Prep |  | 5d | 2019-05-03 A | 2019-05-14 A | CIC-1270, CIC-1530 | 100% |  | 2019-05-08 | 2019-05-14 |  |  |
| CIC-1100 |  | Submittal Approval |  | 10d | 2019-05-15 A | 2019-05-20 A | CIC-1090 | 100% |  | 2019-05-10 | 2019-05-24 |  |  |
| CIC-1110 |  | Fabrication & Delivery |  | 20d | 2019-05-22 A | 2019-06-19 | CIC-1100 | 45% | 11d | 2019-05-29 | 2019-06-25 | 37d | 24d |

| ID | WBS | Activity | Duration | Start | Finish | Predecessors | Complete | Remaining | Planned start | Planned finish | Total float | Free float |
| --- | --- | --- | --- | --- | --- | --- | --- | --- | --- | --- | --- | --- |
|  | 3 | **Marble & Tiles** |  | 2019-04-22 | 2019-08-08 |  |  |  |  |  |  |  |
| CIC-1120 |  | Submittal Prep | 5d | 2019-04-22 A | 2019-04-24 A | CIC-1270, CIC-1530 | 100% |  | 2019-05-08 | 2019-05-14 |  |  |
| CIC-1130 |  | Submittal Approval | 5d | 2019-04-25 A | 2019-06-04 A | CIC-1120 | 100% |  | 2019-06-05 | 2019-06-11 |  |  |
| CIC-1140 |  | Fabrication & Delivery | 30d | 2019-06-05 A | 2019-08-08 | CIC-1130 |  | 45d | 2019-06-12 | 2019-07-24 | 5d | 0d |
|  | 4 | **Heat Pumps** |  | 2019-03-11 | 2019-06-10 |  |  |  |  |  |  |  |
| CIC-1150 |  | Submittal Prep | 5d | 2019-03-11 A | 2019-03-14 A | CIC-1270, CIC-1530 | 100% |  | 2019-05-08 | 2019-05-14 |  |  |
| CIC-1160 |  | Submittal Approval | 5d | 2019-03-15 A | 2019-03-27 A | CIC-1150 | 100% |  | 2019-05-15 | 2019-05-21 |  |  |
| CIC-1170 |  | Fabrication & Delivery | 30d | 2019-04-22 A | 2019-06-10 | CIC-1160 | 87% | 4d | 2019-05-22 | 2019-07-03 | 51d | 0d |
|  | 5 | **Air Distribution** |  | 2019-04-01 | 2019-06-06 |  |  |  |  |  |  |  |
| CIC-1180 |  | Submittal Prep | 5d | 2019-04-01 A | 2019-04-03 A | CIC-1270, CIC-1530 | 100% |  | 2019-05-08 | 2019-05-14 |  |  |
| CIC-1190 |  | Submittal Approval | 5d | 2019-04-04 A | 2019-04-25 A | CIC-1180 | 100% |  | 2019-05-15 | 2019-05-21 |  |  |
| CIC-1200 |  | Fabrication & Delivery | 20d | 2019-04-26 A | 2019-06-06 | CIC-1190 | 90% | 2d | 2019-05-22 | 2019-06-19 | 27d | 22d |
|  | 6 | **Electrical Panel** |  | 2019-04-15 | 2019-05-27 |  |  |  |  |  |  |  |
| CIC-1210 |  | Submittal Prep | 5d | 2019-04-15 A | 2019-04-17 A | CIC-1270, CIC-1530 | 100% |  | 2019-05-08 | 2019-05-14 |  |  |
| CIC-1220 |  | Submittal Approval | 5d | 2019-04-18 A | 2019-04-22 A | CIC-1210 | 100% |  | 2019-05-15 | 2019-05-21 |  |  |
| CIC-1230 |  | Fabrication & Delivery | 20d | 2019-04-23 A | 2019-05-27 A | CIC-1220 | 100% |  | 2019-05-22 | 2019-06-19 |  |  |
|  | 7 | **Pool Equipment** |  | 2019-04-22 | 2019-05-28 |  |  |  |  |  |  |  |
| CIC-1240 |  | Submittal Prep | 5d | 2019-04-22 A | 2019-04-26 A | CIC-1270, CIC-1530 | 100% |  | 2019-05-08 | 2019-05-14 |  |  |
| CIC-1250 |  | Submittal Approval | 5d | 2019-04-29 A | 2019-04-30 A | CIC-1240 | 100% |  | 2019-05-15 | 2019-05-21 |  |  |
| CIC-1260 |  | Fabrication & Delivery | 20d | 2019-05-01 A | 2019-05-28 A | CIC-1250 | 100% |  | 2019-05-22 | 2019-06-19 |  |  |
|  | 3 | **CONSTRUCTION** |  | 2019-04-08 | 2019-08-29 |  |  |  |  |  |  |  |
|  | 1 | **Millwork** |  | 2019-05-13 | 2019-08-22 |  |  |  |  |  |  |  |
| CIC-1280 |  | Millwork Removal | 5d | 2019-05-13 A | 2019-05-17 A | CIC-1320 SS | 100% |  | 2019-05-08 | 2019-05-14 |  |  |
| CIC-1290 |  | Millwork Installation | 15d | 2019-08-02 | 2019-08-22 | CIC-1340, CIC-1490, CIC-1080 |  |  |  |  | 5d |  |

| ID | WBS | Activity | Duration | Start | Finish | Predecessors | Complete | Planned start | Planned finish | Total float | Free float |
| --- | --- | --- | --- | --- | --- | --- | --- | --- | --- | --- | --- |
|  | 2 | **CSA** |  | 2019-04-08 | 2019-08-15 |  |  |  |  |  |  |
| CIC-1300 |  | Terrazo Exterior Demolition | 10d | 2019-04-08 A | 2019-04-16 A | CIC-1270 | 100% | 2019-05-08 | 2019-05-21 |  |  |
| CIC-1320 |  | Marble Finishes Removal | 5d | 2019-04-17 A | 2019-05-06 A | CIC-1440 | 100% | 2019-05-28 | 2019-06-03 |  |  |
| CIC-1310 |  | Terrazo Interior Demolition | 7d | 2019-05-06 A | 2019-05-15 A | CIC-1280, CIC-1480 | 100% | 2019-06-06 | 2019-06-14 |  |  |
| CIC-1380 |  | Entry Steel Fins | 10d | 2019-06-05 | 2019-06-18 | CIC-1310 SS |  |  |  | 43d | 0d |
| CIC-1370 |  | New Terrazo Interior | 15d | 2019-06-11 | 2019-07-01 | CIC-1310, CIC-1550 FS+3d |  |  |  | 5d | 0d |
| CIC-1350 |  | Entry Area Concrete Slab | 2d | 2019-06-19 | 2019-06-20 | CIC-1380 |  |  |  | 43d | 7d |
| CIC-1360 |  | New Terrazo Exterior | 5d | 2019-07-02 | 2019-07-09 | CIC-1370, CIC-1350, CIC-1550 |  |  |  | 36d |  |
| CIC-1330 |  | Drywall Assemblies | 10d | 2019-07-11 | 2019-07-24 | CIC-1420 |  |  |  | 5d | 0d |
| CIC-1340 |  | Paint | 5d | 2019-07-26 | 2019-08-01 | CIC-1330 |  |  |  | 5d | 0d |
| CIC-1390 |  | Toilet Room Special Coating | 2d | 2019-07-26 | 2019-07-29 | CIC-1370, CIC-1110, CIC-1330 |  |  |  | 13d | 8d |
| CIC-1400 |  | Marble Installation | 5d | 2019-08-09 | 2019-08-15 | CIC-1390, CIC-1140 |  |  |  | 5d | 0d |
|  | 3 | **MEP** |  | 2019-04-09 | 2019-08-22 |  |  |  |  |  |  |
| CIC-1440 |  | Plumbing Fixtures Removal | 3d | 2019-04-09 A | 2019-04-12 A | CIC-1300 | 100% | 2019-05-08 | 2019-05-10 |  |  |
| CIC-1450 |  | HVAC System Removal | 5d | 2019-05-01 A | 2019-05-07 A | CIC-1440 | 100% | 2019-05-29 | 2019-06-04 |  |  |
| CIC-1470 |  | Electrical Panel Modification | 10d | 2019-06-05 | 2019-06-18 | CIC-1230 |  |  |  | 50d |  |
| CIC-1410 |  | Heat Pumps Installation | 5d | 2019-06-11 | 2019-06-17 | CIC-1170 |  |  |  | 51d |  |
| CIC-1430 |  | Ductwork | 5d | 2019-07-02 | 2019-07-09 | CIC-1280, CIC-1370 |  |  |  | 5d | 0d |
| CIC-1420 |  | Air Distribution | 1d | 2019-07-10 | 2019-07-10 | CIC-1430, CIC-1200 |  |  |  | 5d | 0d |
| CIC-1460 |  | Plumbing Fixtures Installation | 5d | 2019-08-16 | 2019-08-22 | CIC-1400 |  |  |  | 5d |  |
|  | 4 | **Specialties** |  | 2019-05-24 | 2019-08-29 |  |  |  |  |  |  |
| CIC-1480 |  | Glass & Glazing Removal | 5d | 2019-05-24 A | 2019-05-27 A | CIC-1280 SS+2d | 100% | 2019-05-29 | 2019-06-04 |  |  |
| CIC-1490 |  | Glass & Glazing Installation | 10d | 2019-06-11 | 2019-06-24 | CIC-1020 |  |  |  | 31d | 26d |
| CIC-1500 |  | Double Double Room Pool | 10d | 2019-08-16 | 2019-08-29 | CIC-1050, CIC-1260 |  |  |  | 0d |  |
| CIC-1510 |  | King Room Pool Refurbish | 5d | 2019-08-16 | 2019-08-22 | CIC-1050 |  |  |  | 5d |  |

| ID | WBS | Activity | Type | Duration | Start | Finish | Predecessors | Total float |
| --- | --- | --- | --- | --- | --- | --- | --- | --- |
|  | 4 | **PROJECT FINISH** |  |  | 2019-08-29 | 2019-08-29 |  |  |
| CIC-1520 |  | Project Finish | milestone | 0d | 2019-08-29 | 2019-08-29 | CIC-1510, CIC-1500, CIC-1490, CIC-1470, CIC-1460, CIC-1420, CIC-1410, CIC-1400, CIC-1380, CIC-1370, CIC-1360, CIC-1350, CIC-1340, CIC-1330, CIC-1320, CIC-1290 | 0d |
